Schedule from MS Project, 2023-09-14 to 2023-10-31, costs in $.

## Calendars

- Estándar: Mon-Fri 09:00-13:00, 15:00-19:00; Sat-Sun off. Exceptions (off unless hours are given): 2023-10-16 (Dia de la Diversidad Cultural).

## Resources

| Resource | Rate | Cost per use |
| --- | --- | --- |
| Computadoras |  | 1020000 |
| Materiales electricos |  | 40000 |
| Materiales de limpieza |  | 6000 |
| Ingeniero de Sistemas |  | 787162 |
| Electricista |  | 12000 |
| Tecnico informatico | 4000 |  |
| Programador Junior | 16840 |  |
| Programador Senior | 18841 |  |
| Diseñador de Interfaces | 11378 |  |
| Ingeniero de pruebas | 13834 |  |
| Analista en sistemas | 15173 |  |
| Administrador de BD | 15173 |  |
| Servicio de limpieza | 1300 |  |
| Capacitador | 4298 |  |

## Schedule

| ID | WBS | Task | Type | Duration | Start | Finish | Predecessors | Total slack | Free slack | Resources | Work | Cost |
| --- | --- | --- | --- | --- | --- | --- | --- | --- | --- | --- | --- | --- |
| 1 | 1 | **Sistema de gestion de turnos y pacientes para la SAP** |  | 32.5d | 2023-09-14 | 2023-10-31 |  | 0d |  | Ingeniero de Sistemas | 752h | 6,844,063.33 |
| 2 | 1.1 | **Investigación preliminar** |  | 18.25d | 2023-09-14 | 2023-10-10 |  | 0d |  |  | 158h | 1,480,844 |
| 3 | 1.1.1 | **Verificación de instalaciones** |  | 1.5d | 2023-09-14 | 2023-09-15 |  | 23.5d |  | Electricista | 12h | 12,000 |
| 4 | 1.1.1.1 | Verificar el estado de las instalaciones electricas. |  | 0.5d | 2023-09-14 | 2023-09-14 |  | 36.75d | 0d |  |  |  |
| 5 | 1.1.1.2 | Investigar recursos para el reacondicionamiento electrico del sitio. |  | 1d | 2023-09-14 | 2023-09-15 | 4 | 28d | 0d |  |  |  |
| 6 | 1.1.1.3 | Verificación de instalaciones finalizada. | milestone | 0d | 2023-09-15 | 2023-09-15 | 5 | 28d |  |  |  |  |
| 7 | 1.1.2 | **Entrevistas** |  | 0.5d | 2023-09-14 | 2023-09-14 |  | 0d |  |  | 4h | 60,692 |
| 8 | 1.1.2.1 | Realizar entrevista al jefe |  | 0.25d | 2023-09-14 | 2023-09-14 |  | 0d |  | Analista en sistemas | 2h | 30,346 |
| 9 | 1.1.2.2 | Realizar entrevista a las recepcionistas |  | 0.25d | 2023-09-14 | 2023-09-14 | 8 | 0d |  | Analista en sistemas | 2h | 30,346 |
| 10 | 1.1.2.3 | Entrevistas finalizadas. | milestone | 0d | 2023-09-14 | 2023-09-14 | 9 | 0d |  |  |  |  |
| 11 | 1.1.3 | Elaborar Especificación de Requisitos de Usuario (ERS) |  | 3d | 2023-09-14 | 2023-09-19 | 10 | 0d |  | Analista en sistemas | 24h | 364,152 |
| 12 | 1.1.4 | Verificar el estado de los equipos actuales (computadoras). |  | 0.5d | 2023-09-19 | 2023-09-19 | 11 | 10.75d | 0d | Tecnico informatico | 4h | 16,000 |
| 13 | 1.1.5 | Realizar pedido de computadoras nuevas a la Subsecretaría de Salud. |  | 0.25d | 2023-09-20 | 2023-09-20 | 12 | 10.75d | 0d | Tecnico informatico | 2h | 8,000 |
| 14 | 1.1.6 | Recibir pedido de computadoras. |  | 14d | 2023-09-20 | 2023-10-10 | 13 | 24d | 0d | Computadoras | 112h | 1,020,000 |
| 15 | 1.1.7 | Investigación preliminar realizada. | milestone | 0d | 2023-10-10 | 2023-10-10 | 14 | 24d |  |  |  |  |
| 16 | 1.2 | **Desarrollo** |  | 29d | 2023-09-19 | 2023-10-31 |  | 0d |  |  | 334h | 4,244,804 |
| 17 | 1.2.1 | **Base de datos** |  | 9.5d | 2023-09-19 | 2023-10-02 |  | 0d |  |  | 72h | 1,119,128 |
| 18 | 1.2.1.1 | Recopilar informacion de las planillas de Excel |  | 1d | 2023-09-19 | 2023-09-20 | 11 | 26d | 6.5d | Programador Junior | 8h | 134,720 |
| 19 | 1.2.1.2 | Realizar el modelo entidad relación de la base de datos para turnos y pacientes. |  | 2d | 2023-09-19 | 2023-09-21 | 11 | 0d |  | Administrador de BD | 16h | 242,768 |
| 20 | 1.2.1.3 | Realizar modelo relacional de la BD. |  | 1d | 2023-09-21 | 2023-09-22 | 19 | 0d |  | Administrador de BD | 8h | 121,384 |
| 21 | 1.2.1.4 | Desarrollar la base de datos. |  | 4d | 2023-09-22 | 2023-09-28 | 20 | 0d |  | Administrador de BD | 32h | 485,536 |
| 22 | 1.2.1.5 | Importar datos a la BD |  | 0.5d | 2023-10-02 | 2023-10-02 | 18, 21 | 0d |  | Programador Junior | 4h | 67,360 |
| 23 | 1.2.1.6 | Desplegar la base de datos. |  | 0.5d | 2023-10-02 | 2023-10-02 | 22 | 0d |  | Programador Junior | 4h | 67,360 |
| 24 | 1.2.1.7 | Base de datos desplegada. | milestone | 0d | 2023-10-02 | 2023-10-02 | 23 | 0d |  |  |  |  |

| ID | WBS | Task | Type | Duration | Start | Finish | Predecessors | Total slack | Free slack | Resources | Work | Cost |
| --- | --- | --- | --- | --- | --- | --- | --- | --- | --- | --- | --- | --- |
| 25 | 1.2.2 | **Interfaz de usuario** |  | 7.25d | 2023-09-19 | 2023-09-28 |  | 2.25d |  |  | 58h | 958,444 |
| 26 | 1.2.2.1 | Diseñar boceto de interfaz del programa que será usado por el personal de recepción. |  | 2d | 2023-09-19 | 2023-09-21 | 11 | 1.75d | 0d | Diseñador de Interfaces | 16h | 182,048 |
| 27 | 1.2.2.2 | Presentar boceto al personal de recepción. |  | 0.25d | 2023-09-21 | 2023-09-21 | 26 | 1.75d | 0d | Diseñador de Interfaces | 2h | 22,756 |
| 28 | 1.2.2.3 | Desarrollar interfaz. |  | 5d | 2023-09-21 | 2023-09-28 | 27 | 1.75d | 0d | Programador Senior | 40h | 753,640 |
| 29 | 1.2.2.4 | Interfaz de usuario realizada. | milestone | 0d | 2023-09-28 | 2023-09-28 | 28 | 1.75d |  |  |  |  |
| 30 | 1.2.3 | **Aplicación** |  | 8d | 2023-10-03 | 2023-10-12 |  | 0d |  |  | 64h | 1,205,824 |
| 31 | 1.2.3.1 | Realizar diagrama de clases. |  | 1d | 2023-10-03 | 2023-10-03 | 29, 24 | 0d |  | Programador Senior | 8h | 150,728 |
| 32 | 1.2.3.2 | Desarrollar el módulo de turnos de la aplicación. |  | 7d | 2023-10-04 | 2023-10-12 | 31 | 0d |  | Programador Senior [50%] | 28h | 527,548 |
| 33 | 1.2.3.3 | Desarrollar el módulo de pacientes de la aplicación. |  | 7d | 2023-10-04 | 2023-10-12 | 31 | 0d |  | Programador Senior [50%] | 28h | 527,548 |
| 34 | 1.2.3.4 | Aplicación desarrollada. | milestone | 0d | 2023-10-12 | 2023-10-12 | 33, 32 | 0d |  |  |  |  |
| 35 | 1.2.4 | **Integración** |  | 4d | 2023-10-13 | 2023-10-19 |  | 0d |  |  | 48h | 792,240 |
| 36 | 1.2.4.1 | Integrar capas del sistema. |  | 2d | 2023-10-13 | 2023-10-17 | 34 | 0d |  | Programador Senior | 16h | 301,456 |
| 37 | 1.2.4.2 | Realizar pruebas al sistema. |  | 2d | 2023-10-18 | 2023-10-19 | 36 | 0d |  | Ingeniero de pruebas | 16h | 221,344 |
| 38 | 1.2.4.3 | Realizar manual de usuario de la aplicación. |  | 2d | 2023-10-18 | 2023-10-19 | 36 | 0d |  | Programador Junior | 16h | 269,440 |
| 39 | 1.2.4.4 | Integración finalizada. | milestone | 0d | 2023-10-19 | 2023-10-19 | 38, 37 | 0d |  |  |  |  |
| 40 | 1.2.5 | **Despliegue** |  | 7.5d | 2023-10-20 | 2023-10-31 |  | 0d |  |  | 92h | 169,168 |
| 41 | 1.2.5.1 | **Reacondicionamiento** |  | 4.5d | 2023-10-20 | 2023-10-26 |  | 0d |  |  | 68h | 68,400 |
| 42 | 1.2.5.1.1 | **Reacondicionamiento electrico** |  | 3.5d | 2023-10-20 | 2023-10-25 |  | 0d |  | Electricista | 52h | 52,000 |
| 43 | 1.2.5.1.1.1 | Realizar presupuesto de recursos para el reacondicionamiento eléctrico del sitio (cableado y limpieza). |  | 0.5d | 2023-10-20 | 2023-10-20 | 39, 6 | 0d |  |  |  |  |
| 44 | 1.2.5.1.1.2 | Reacondicionar el lugar. |  | 3d | 2023-10-20 | 2023-10-25 | 43 | 0d |  | Materiales electricos | 24h | 40,000 |
| 45 | 1.2.5.1.1.3 | Reacondicionamiento electrico finalizado | milestone | 0d | 2023-10-25 | 2023-10-25 | 44 | 0d |  |  |  |  |
| 46 | 1.2.5.1.2 | Realizar limpieza del lugar |  | 1d | 2023-10-25 | 2023-10-26 | 45 | 0d |  | Materiales de limpieza; Servicio de limpieza | 16h | 16,400 |
| 47 | 1.2.5.1.3 | Reacondicionamiento finalizado | milestone | 0d | 2023-10-26 | 2023-10-26 | 46 | 0d |  |  |  |  |
| 48 | 1.2.5.2 | **Instalación** |  | 3d | 2023-10-26 | 2023-10-31 |  | 0d |  |  | 24h | 100,768 |
| 49 | 1.2.5.2.1 | Instalar las nuevas computadoras en el área de recepción. |  | 0.75d | 2023-10-26 | 2023-10-27 | 15, 47 | 0d |  | Tecnico informatico | 6h | 24,000 |
| 50 | 1.2.5.2.2 | Instalar el sistema en las computadoras nuevas. |  | 0.25d | 2023-10-27 | 2023-10-27 | 49 | 0d |  | Tecnico informatico | 2h | 8,000 |
| 51 | 1.2.5.2.3 | Capacitar al personal de recepción. |  | 2d | 2023-10-27 | 2023-10-31 | 50 | 0d |  | Capacitador | 16h | 68,768 |
| 52 | 1.2.5.2.4 | Instalación finalizada. | milestone | 0d | 2023-10-31 | 2023-10-31 | 51 | 0d |  |  |  |  |
| 53 | 1.2.5.3 | Sistema desplegado. | milestone | 0d | 2023-10-31 | 2023-10-31 | 52 | 0d |  |  |  |  |
| 54 | 1.2.6 | Desarrollo finalizado. | milestone | 0d | 2023-10-31 | 2023-10-31 | 53 | 0d |  |  |  |  |
| 55 | 2 | Sistema de gestión implementado. | milestone | 0d | 2023-10-31 | 2023-10-31 | 54 | 0d |  |  |  |  |
